How a schedule from an exported table changed from version to version. A marks actual dates.

## Version 1 (saved 2026-11-22)

Note of the change: v5 の記録：受入105件の結果（docs/v5/ACCEPTANCE_V5.csv）、ブランド反映の報告、WBS に V01〜V21・ロードマップ M8・論点 Q21〜Q23、友人β の判定（v5：NO-GO 条件付き）、STATE・DECISIONS・UX_BUGS、受領パックを 00_受領資料/v5_plus_brand_20261122 に。本部の報告は1項目60字に

| ID | Task | Start | Finish |
| --- | --- | --- | --- |
| W001 | 受領v2のgit状態/差分/既存設計を確認 | 2026-11-21 | 2026-11-21 |
| W002 | npm run check基準ログ保存 | 2026-11-21 | 2026-11-21 |
| W003 | 旧参考UI4枚とv2の比較スクリーンショットを用意 | 2026-11-21 | 2026-11-21 |
| W004 | 追加復元カテゴリID衝突の失敗テスト | 2026-11-21 | 2026-11-21 |
| W005 | 追加復元資格/勉強ログID衝突の失敗テスト | 2026-11-21 | 2026-11-21 |
| W006 | 安全な追加復元または一時無効化 | 2026-11-21 | 2026-11-21 |
| W007 | 復元前の差分・競合・失敗リスクを表示 | 2026-11-21 | 2026-11-21 |
| W008 | v1/v2復元・壊れたJSON・保存失敗の回帰 | 2026-11-21 | 2026-11-21 |
| W009 | 資格削除と関連ログ削除を安全確認 | 2026-11-21 | 2026-11-21 |
| W010 | NISA制度/簿価/売却翌年復活の境界テスト | 2026-11-21 | 2026-11-21 |
| W011 | 繰返し予定の31日/2月29日/終了日テスト | 2026-11-21 | 2026-11-21 |
| W012 | ホームの予定・残予算・主要CTAを点検 | 2026-11-21 | 2026-11-21 |
| W013 | 常設+から支出/収入/予定を選択 | 2026-11-21 | 2026-11-21 |
| W014 | カレンダー日選択を登録フォームへ引継ぐ | 2026-11-21 | 2026-11-21 |
| W015 | カレンダー日別の予定・金額・期限を整理 | 2026-11-21 | 2026-11-21 |
| W016 | 月次振り返り/レポートの導線を追加 | 2026-11-21 | 2026-11-21 |
| W017 | 前月/週比較・カテゴリ内訳を表示 | 2026-11-21 | 2026-11-21 |
| W018 | レポート内訳→履歴明細の導線 | 2026-11-21 | 2026-11-21 |
| W019 | くらしの気づき（根拠付き）を最小表示 | 2026-11-21 | 2026-11-21 |
| W020 | 今日のナビ7件以上の全件導線 | 2026-11-21 | 2026-11-21 |
| W021 | 今日のナビ→個別タスク/契約等へ | 2026-11-21 | 2026-11-21 |
| W022 | バックアップ案内を全領域利用に拡張 | 2026-11-21 | 2026-11-21 |
| W023 | メニュー頻用領域と準備中の階層改善 | 2026-11-21 | 2026-11-21 |
| W024 | 固定費からの支出記録・次回日付の確認 | 2026-11-21 | 2026-11-21 |
| W025 | 旧UXに寄せたUI日本語統一 | 2026-11-21 | 2026-11-21 |
| W026 | 画像入口をOCRと誤認しない表記へ | 2026-11-21 | 2026-11-21 |
| W027 | 共有/AI/連携/ウィジェットの準備中表示 | 2026-11-21 | 2026-11-21 |
| W028 | スマホ375/390pxの入力・保存ボタン試験 | 2026-11-21 | 2026-11-21 |
| W029 | iPhone Safari実機キーボード/日付試験 | 2026-11-25 | 2026-11-25 |
| W030 | 旧UIの主要ジャーニー自動・手動受入 | 2026-11-21 | 2026-11-23 |
| W031 | npm run checkとデータ復元回帰を再実行 | 2026-11-21 | 2026-11-21 |
| W032 | 友人β向け個人データ・注意書きを確認 | 2026-11-23 | 2026-11-24 |
| W033 | 友人βのタスクシナリオ実施 | 2026-11-26 | 2026-12-02 |
| W034 | P0不具合ゼロを確認しβ判定 | 2026-12-03 | 2026-12-03 |
| W035 | 公開・配布のリスク/プライバシー最終判定 | 2026-12-03 | 2026-12-04 |
| W036 | 公開手順とロールバック手順準備 | 2026-12-04 | 2026-12-04 |
| W037 | 利用実態から改善優先度の見直し | 2026-12-03 | 2026-12-05 |
| W038 | 親フォルダにROADMAP/WBS/STATUS同期 | 2026-11-21 | 2026-11-21 |
| W039 | 親フォルダ進捗最終同期と引継ぎ | 2026-11-21 | 2026-11-21 |
| B01 | 現行ブランチ・元データの保護 | 2026-11-22 | 2026-11-22 |
| B02 | 差分パッチのレビューと移植 | 2026-11-22 | 2026-11-22 |
| B03 | 復元の例外・参照・ID重複の回帰 | 2026-11-22 | 2026-11-22 |
| B04 | 複数タブの上書き競合 | 2026-11-22 | 2026-11-22 |
| B05 | ホームと＋の初回導線 | 2026-11-22 | 2026-11-22 |
| B06 | カレンダー・期限・ナビ直編集 | 2026-11-22 | 2026-11-22 |
| B07 | 振り返りの月末・過去月比較 | 2026-11-22 | 2026-11-22 |
| B08 | 初回説明・日本語・空状態 | 2026-11-22 | 2026-11-22 |
| B09 | 主要画面の入力しやすさ | 2026-11-22 | 2026-11-24 |
| B10 | 自動テスト・ビルド | 2026-11-22 | 2026-11-22 |
| B11 | バックアップ実機操作 | 2026-11-22 | 2026-11-22 |
| B12 | iPhone Safari実機 | 2026-11-22 | 2026-11-22 |
| B13 | GitHubリポジトリ整備 | 2026-11-22 | 2026-11-25 |
| B14 | Vercel等へのデプロイ準備 | 2026-11-22 | 2026-11-22 |
| B15 | 公開URLの作成 | 2026-11-25 | 2026-11-25 |
| B16 | 友人β招待・フィードバック回収 | 2026-11-26 | 2026-12-02 |
| B17 | β後の公開判断 | 2026-12-03 | 2026-12-04 |
| V01 | v5 の追加項目でも既存データを壊さない | 2026-11-22 | 2026-11-22 |
| V02 | 日本語の全面再監査 | 2026-11-22 | 2026-11-22 |
| V03 | ホームを3項目に絞る | 2026-11-22 | 2026-11-22 |
| V04 | 予定の最小入力 | 2026-11-22 | 2026-11-22 |
| V05 | 予定の詳細 | 2026-11-22 | 2026-11-22 |
| V06 | 日付の引き継ぎとカレンダー | 2026-11-22 | 2026-11-22 |
| V07 | 旅行の行程 | 2026-11-22 | 2026-11-22 |
| V08 | Googleマップ・Googleカレンダー・Web検索 | 2026-11-22 | 2026-11-22 |
| V09 | 資格の候補検索 | 2026-11-22 | 2026-11-22 |
| V10 | 勉強時間の目安と1日の目標 | 2026-11-22 | 2026-11-22 |
| V11 | 参考書・note のリンク | 2026-11-22 | 2026-11-22 |
| V12 | くらしベースのロゴ・表示名 | 2026-11-22 | 2026-11-22 |
| V13 | OCR データの利用条件の確認 | 2026-11-26 | 2026-11-27 |
| V14 | OCR 画像2,000件の取得と SHA の固定 | 2026-11-27 | 2026-11-28 |

| ID | Task | Start | Finish |
| --- | --- | --- | --- |
| V15 | OCR の実装と精度の基準 | 2026-12-10 | 2026-12-20 |
| V16 | npm run check | 2026-11-22 | 2026-11-22 |
| V17 | iPhone 実機で v5 の新しい画面 | 2026-11-23 | 2026-11-23 |
| V18 | 初見の友人のテスト | 2026-11-26 | 2026-12-02 |
| V19 | 友人β の GO 判定（v5） | 2026-11-22 | 2026-11-25 |
| V20 | Amazon アソシエイトの適法性 | 2026-12-10 | 2026-12-12 |
| V21 | 支出と旅行のひも付け | 2026-11-24 | 2026-11-25 |

## Version 2 (saved 2026-11-22)

Note of the change: OCR 評価用データの利用条件を確認（V13）：CORD v2 は CC BY 4.0、nano-receipts は MIT だが出どころが弱い。どちらも日本のレシートではない。ダウンロードはしていない

Last finish stays 2026-12-20.

Added:

| ID | Task | Start | Finish |
| --- | --- | --- | --- |
| F01 | 予定の編集で空にした詳細が戻る不具合 | 2026-11-22 | 2026-11-22 |
| F02 | 追加復元で意味の違う同じIDの旅行に行程がつく不具合 | 2026-11-22 | 2026-11-22 |
| F03 | 容量不足で既存の記録まで開けない不具合 | 2026-11-22 | 2026-11-22 |
| F04 | 復元の保存に失敗すると取り消しの控えを失う不具合 | 2026-11-22 | 2026-11-22 |
| F05 | 文言：Googleカレンダーで予定を作る・URL の案内・保存できないときの案内・バックアップの画面 | 2026-11-22 | 2026-11-22 |
| F06 | 実画面のスクリーンショット | 2026-11-22 | 2026-11-22 |
| F07 | iPhone 実機で修正した流れを確かめる | 2026-11-23 | 2026-11-23 |
| GO01 | Git の戻り地点と作業ブランチ | 2026-11-22 | 2026-11-22 |
| GO02 | すべて削除の完全な削除（wipeAllAppData） | 2026-11-22 | 2026-11-22 |
| GO03 | 削除の途中の失敗と戻し | 2026-11-22 | 2026-11-22 |
| GO04 | 同じ予定の2タブ編集で上書きしない | 2026-11-22 | 2026-11-22 |
| GO05 | 取引・旅行・固定費・タスクなどにも競合の確かめを広げる | 2026-11-22 | 2026-11-22 |
| GO06 | 容量不足の案内でサイトデータを消すように誘わない | 2026-11-22 | 2026-11-22 |
| GO07 | 既存の回帰（v1/v2・復元・旅行・資格など） | 2026-11-22 | 2026-11-22 |
| GO08 | iPhone：予定の詳細を消す→開き直す（B02） | 2026-11-23 | 2026-11-23 |
| GO09 | iPhone：バックアップ→復元→取り消し→やり直し（B03・B04） | 2026-11-23 | 2026-11-23 |
| GO10 | iPhone：キーボード・二重保存（B13） | 2026-11-23 | 2026-11-23 |
| GO11 | 公開前の点検（秘密・noindex）（B15 の静的部分） | 2026-11-22 | 2026-11-22 |
| GO12 | 公開 URL での確認（B01・B14・B15 の公開部分） | 2026-11-25 | 2026-11-25 |
| GO13 | ホーム・予定・設定の文言を短く | 2026-11-22 | 2026-11-22 |
| GO14 | 友人β の GO 判定 | 2026-11-22 | 2026-11-25 |

## Version 3 (saved 2026-11-24)

Note of the change: 記録：N06 CSV 汎用取り込み

Last finish stays 2026-12-20.

Added:

| ID | Task | Start | Finish |
| --- | --- | --- | --- |
| N00 | NEXT v21：全資料の読了・現行との差分の分類・既存 WBS への統合 | 2026-11-25 | 2026-11-25 |
| N01 | T00 基準・費用・版・保存の成立性（費用台帳・保存の移行/復元の試験） | 2026-11-25 |  |
| N02 | 共通の収支計算と二重計上の試験（X01〜X05） | 2026-11-25 |  |
| N03 | T01 既存品質・会計照合・復元（Q01–15・D01–12） | 2026-11-25 |  |
| N04 | T02 日本語・ガイド・設定・既存画面（H01–10・I01–10） | 2026-11-25 |  |
| N05 | T03 既存の地図・グラフ・カレンダーの改善 | 2026-11-25 |  |
| N06 | T04 CSV 汎用取込（CSV:C01–10・X11）。未閉鎖の引用符・固定費の前方一致・誤統合の弱点の修正から | 2026-11-25 |  |
| N07 | T05 OCR・共有・検索・個人化 | 2026-11-25 |  |
| N08 | T06 共通予定・目標・生活イベント | 2026-11-25 |  |
| N09 | T07 旅行・地図・支払予定・外部予定 | 2026-11-25 |  |
| N10 | T08 予測・比較・提案 | 2026-11-25 |  |
| N11 | T09 長期分析・経験再利用 | 2026-11-25 |  |
| N12 | T10 任意同期・端末内 AI・Watch の成立性（設計と検証まで） | 2026-11-25 |  |
| N13 | T11 公開版の判定（対象 Phase の合格後。友人β の NO-GO を自動で解除しない） | 2026-11-25 |  |

## Version 4 (saved 2026-11-25)

Note of the change: A09 の記録（docs/integration/A09_VERIFY.md）：実機の通しの確認は平尾さん「両方 OK」・N22 を完了に戻す・N24 は A10 が残り・STATE・作業時間・本部への報告を作り直し

Last finish stays 2026-12-20.

Added:

| ID | Task | Start |
| --- | --- | --- |
| N14 | v22 G0（P0）：返金・カード債務・保存容量・復元の独立試験 | 2026-11-25 |
| N15 | v22 UI01〜16：既存の X/Q/H/T への照合と実測（重複登録しない） | 2026-11-25 |
| N16 | v22 事業戦略 BIZ01〜10（収益化・広告・アフィリエイト）：設計の反映のみ。実装は承認後 |  |
| N17 | o11 A01 現行の依存・全書き込み経路の棚卸し | 2026-11-25 |
| N18 | o11 A02/A03 共通台帳（購入・返金・収入・カード決済・振替を別の出来事）と並行比較 | 2026-11-25 |
| N19 | o11 A04 Repository 境界と原子的な保存（Web は IndexedDB。iOS は Swift 構成の確認後に決める） | 2026-11-25 |
| N20 | o11 A05 移行と復元（旧データ読取→検証→新DB staging→再読取・件数/金額/関連ID比較→切替。旧データは消さない） | 2026-11-25 |
| N21 | o11 A06 画面を共通台帳へ接続（全画面で同じ条件の金額が一致・予測と実績を分ける） | 2026-11-25 |
| N22 | o11 A07 ネイティブ境界（実 Swift の確認・保存の正本を1つ・通知/OCR/ウィジェットの回帰） | 2026-11-25 |
| N23 | o11 A08 性能・安全（1/5/10/30年の合成データ・容量・応答時間を実機で・外部送信なし） | 2026-11-25 |
| N24 | o11 A09/A10 全体検証とリリース判定（両版の check・実機 E2E・重大欠陥ゼロ・最新 SHA で GO） | 2026-11-25 |

Changed:

| ID | Task | Start | Finish |
| --- | --- | --- | --- |
| V14 | OCR 画像2,000件の取得と SHA の固定 | 2026-11-27 → none | 2026-11-28 → none |

## Version 5 (saved 2026-11-26)

Note of the change: o31/reform を自分用に取り込む（o31 の改革：下のメニュー・追加・メニュー・設定・家計簿・カレンダー・勉強・目標・言葉の直し）。ぶつかったレシートの画面は、自分用の文字読み取りを残して o31 の言葉を当てた。958件合格・build 成功

Last finish stays 2026-12-20.

Added:

| ID | Task | Start |
| --- | --- | --- |
| O31P0 | o31 P0 基準確定・作業中の変更の保全・F/D の現状判定 | 2026-11-27 |
| O31P1 | o31 P1 右端の追加・下のメニュー1〜4・全機能の入口・その他・設定6区切り・家計簿・言葉 | 2026-11-27 |
| O31P2 | o31 P2 分類・カレンダー・繰り返し | 2026-11-27 |
| O31P3 | o31 P3 資格・教材・タイマー・学習計画 | 2026-11-27 |
| O31P4 | o31 P4 目標の条件・階層・実績参照 | 2026-11-27 |
| O31P5 | o31 P5 自由記録・保存集計・入力候補 |  |
| O31P6 | o31 P6 統合品質（性能・両版回帰・アクセシビリティ・独立点検・リリース判定） | 2026-11-27 |
